# 免费用水版本 8k Nov

Schedule from a web Gantt chart, 2024-11-01 to 2025-01-15.
Saturdays and Sundays are off

## Schedule

| ID | WBS | Task | Duration | Start | Finish | Predecessors | Complete | Status |
| --- | --- | --- | --- | --- | --- | --- | --- | --- |
| 3 | 1 | 客户需求冻结 | 5d | 2024-11-01 | 2024-11-07 |  | 100% | done |
| 4 | 2 | **软件定版、开发与测试** | 13d | 2024-11-08 | 2024-11-26 |  | 68% |  |
| 5 | 2.1 | 软件开发 | 10d | 2024-11-08 | 2024-11-21 |  | 80% |  |
| 6 | 2.2 | willfar内部测试 | 1d | 2024-11-22 | 2024-11-22 | 5 |  | waiting |
| 7 | 2.3 | inzalo测试 | 3d | 2024-11-22 | 2024-11-26 | 5 |  | waiting |
| 8 | 3 | 产线生产 | 10d | 2024-11-15 | 2024-11-28 |  | 40% |  |
| 9 | 4 | 物流发货 | 29d | 2024-12-06 | 2025-01-15 |  |  |  |
| 10 | 5 | 南非做STS认证（软件功能修改时需要重新认证） | 10d | 2024-11-27 | 2024-12-10 | 4 |  | waiting |
| 11 | 6 | 国内做CE-RED通信认证（涉及通信变化时需要重新认证） | 1d | 2024-11-27 | 2024-11-27 | 4 |  | waiting |
| 12 | 7 | 南非换ICASA | 1d | 2024-11-28 | 2024-11-28 | 11 |  | waiting |
| 13 | 8 | 南非换NRCS | 1d | 2024-11-29 | 2024-11-29 | 12 |  | waiting |
